Schedule from MS Project, 2016-07-20 to 2016-10-27, A marks actual dates.
Microsoft

## Calendars

- 标准: Mon-Fri 08:00-12:00, 13:00-17:00; Sat-Sun off.

## Resources

| Resource |
| --- |
| 秉谦 |
| 卓尔 |
| 如善 |
| 斯年 |
| 本易 |
| 春泽 |
| 罗文 |
| 嘉善 |
| 澄洪 |
| 澄鸿 |
| chunzhe |
| 丁庆利 |
| 李莉莉 |
| 开发 |
| 雅飞 |
| 澄泓 |
| 修身 |
| 道隐 |
| 腾达 |
| 腾渊 |
| 无涯 |

## Schedule

| ID | WBS | Task | Type | Duration | Start | Finish | Complete | Remaining | Actual start | Resources | Work | Actual work |
| --- | --- | --- | --- | --- | --- | --- | --- | --- | --- | --- | --- | --- |
| 1 | 1 | **翌支付二期研发工作安排** |  | 54d | 2016-08-15 | 2016-10-27 | 82% | 9.7d | 2016-07-20 |  | 816h | 668h |
| 2 | 1.1 | **一期功能优化** |  | 8d | 2016-08-15 | 2016-08-24 |  |  |  |  | 112h |  |
| 3 | 1.1.1 | 前端优化 | manual | 7d | 2016-08-15 | 2016-08-24 |  |  |  | 澄泓 | 56h |  |
| 4 | 1.1.2 | PHP后台优化 | manual | 7d | 2016-08-15 | 2016-08-24 |  |  |  | 卓尔 | 56h |  |
| 5 | 1.2 | **二期新功能研发** |  | 34d | 2016-07-20 A | 2016-09-05 | 96% | 1.49d |  |  | 448h | 428h |
| 6 | 1.2.1 | **设计/规划** |  | 34d | 2016-07-20 A | 2016-09-05 | 89% | 3.62d |  |  | 180h | 160h |
| 7 | 1.2.1.1 | **产品需求设计** |  | 34d | 2016-07-20 A | 2016-09-05 | 92% | 2.83d |  |  | 88h | 80h |
| 8 | 1.2.1.1.1 | 企业资料修改审核的布局优化设计 | manual | 2d | 2016-07-20 A | 2016-07-21 A | 100% |  |  | 雅飞 | 16h | 16h |
| 9 | 1.2.1.1.2 | 异常订单管理 | manual | 2d | 2016-07-22 A | 2016-07-25 A | 100% |  |  | 雅飞 | 16h | 16h |
| 10 | 1.2.1.1.3 | 邮件&短信模板设置设计 | manual | 1d | 2016-07-26 A | 2016-07-26 A | 100% |  |  |  |  |  |
| 11 | 1.2.1.1.4 | 配置管理模块原型设计 | manual | 2d | 2016-07-27 A | 2016-07-28 A | 100% |  |  | 雅飞 | 16h | 16h |
| 12 | 1.2.1.1.5 | 对账单管理模块原型设计 | manual | 2d | 2016-07-29 A | 2016-08-01 A | 100% |  |  | 雅飞 | 16h | 16h |
| 13 | 1.2.1.1.6 | 二期需求文档输出 | manual | 1d | 2016-08-02 A | 2016-08-02 A | 100% |  |  | 雅飞 | 8h | 8h |
| 14 | 1.2.1.1.7 | 二期需求文档评审 | manual | 1d | 2016-08-03 A | 2016-08-04 A | 100% |  |  | 雅飞 | 8h | 8h |
| 15 | 1.2.1.1.8 | 增加转账功能的业务需求设计及原型设计 | manual | 1d | 2016-09-05 | 2016-09-05 |  |  |  | 雅飞 | 8h |  |
| 16 | 1.2.1.2 | **研发设计** |  | 10d | 2016-08-15 A | 2016-08-26 | 87% | 1.3d |  |  | 92h | 80h |
| 17 | 1.2.1.2.1 | **PHP后台设计** |  | 5d | 2016-08-15 A | 2016-08-19 | 88% | 0.62d |  |  | 64h | 56h |
| 18 | 1.2.1.2.1.1 | 企业资料修改模块 | manual | 1d | 2016-08-15 A | 2016-08-15 A | 100% |  |  | 腾渊 | 8h | 8h |
| 19 | 1.2.1.2.1.2 | 短信&邮件模板设置 | manual | 1d | 2016-08-16 A | 2016-08-16 A | 100% |  |  | 腾渊 | 8h | 8h |
| 20 | 1.2.1.2.1.3 | 异常订单管理模块 | manual | 1d | 2016-08-17 A | 2016-08-17 A | 100% |  |  | 腾渊 | 8h | 8h |
| 21 | 1.2.1.2.1.4 | 配置管理模块设计 | manual | 2d | 2016-08-18 A | 2016-08-19 A | 100% |  |  | 腾渊 | 16h | 16h |
| 22 | 1.2.1.2.1.5 | 对账单模块设计 | manual | 2d | 2016-08-15 A | 2016-08-16 A | 100% |  |  | 卓尔 | 16h | 16h |
| 23 | 1.2.1.2.1.6 | 增加转账功能的后台接口设计 | manual | 1d | 2016-09-06 | 2016-09-06 |  |  |  | 腾渊 | 8h |  |
| 24 | 1.2.1.2.2 | **前端设计** |  | 10d | 2016-08-15 | 2016-08-26 | 86% | 1.43d | 2016-08-22 |  | 28h | 24h |
| 25 | 1.2.1.2.2.1 | 企业资料修改模块 | manual | 1d | 2016-08-22 A | 2016-08-23 A | 100% |  |  | 无涯 | 8h | 8h |
| 26 | 1.2.1.2.2.2 | 短信&邮件模板设置 | manual | 0.5d | 2016-08-22 A | 2016-08-22 A | 100% |  |  | 澄泓 | 4h | 4h |
| 27 | 1.2.1.2.2.3 | 异常订单管理模块 | manual | 0.5d | 2016-08-24 A | 2016-08-24 A | 100% |  |  | 无涯 | 4h | 4h |
| 28 | 1.2.1.2.2.4 | 配置管理模块设计 | manual | 0.5d | 2016-08-23 A | 2016-08-23 A | 100% |  |  | 澄泓 | 4h | 4h |
| 29 | 1.2.1.2.2.5 | 对账单模块设计 | manual | 0.5d | 2016-08-25 A | 2016-08-25 A | 100% |  |  | 无涯 | 4h | 4h |
| 30 | 1.2.1.2.2.6 | 增加转账功能的设计 | manual | 0.5d | 2016-09-06 | 2016-09-06 |  |  |  | 无涯 | 4h |  |

| ID | WBS | Task | Type | Duration | Start | Finish | Complete | Remaining | Actual start | Actual finish | Resources | Work | Actual work |
| --- | --- | --- | --- | --- | --- | --- | --- | --- | --- | --- | --- | --- | --- |
| 31 | 1.2.2 | **编码开发** |  | 11d | 2016-08-22 | 2016-09-05 | 100% |  | 2016-08-17 | 2016-09-19 |  | 268h | 268h |
| 32 | 1.2.2.1 | **PHP后台编码** |  | 10d | 2016-08-22 | 2016-09-02 | 100% |  | 2016-08-17 | 2016-09-07 |  | 120h | 120h |
| 33 | 1.2.2.1.1 | 企业资料修改模块 | manual | 2d | 2016-08-22 A | 2016-08-23 A | 100% |  |  |  | 腾渊 | 16h | 16h |
| 34 | 1.2.2.1.2 | 短信&邮件模板设置 | manual | 2d | 2016-08-24 A | 2016-08-25 A | 100% |  |  |  | 腾渊 | 16h | 16h |
| 35 | 1.2.2.1.3 | 异常订单管理模块 | manual | 3d | 2016-08-26 A | 2016-08-30 A | 100% |  |  |  | 腾渊 | 24h | 24h |
| 36 | 1.2.2.1.4 | 配置管理模块编码 | manual | 2d | 2016-09-01 A | 2016-09-02 A | 100% |  |  |  | 腾渊 | 16h | 16h |
| 37 | 1.2.2.1.5 | 对账单管理模块编码 | manual | 5d | 2016-08-17 A | 2016-08-24 A | 100% |  |  |  | 卓尔 | 40h | 40h |
| 38 | 1.2.2.1.6 | 增加转账功能相关的开发 | manual | 1d | 2016-09-07 A | 2016-09-07 A | 100% |  |  |  | 腾渊 | 8h | 8h |
| 39 | 1.2.2.2 | **前端编码** |  | 9d | 2016-08-24 A | 2016-09-05 | 100% |  |  | 2016-09-19 |  | 148h | 148h |
| 40 | 1.2.2.2.1 | 企业资料修改模块 | manual | 1d | 2016-08-24 A | 2016-08-24 A | 100% |  |  |  | 无涯 | 8h | 8h |
| 41 | 1.2.2.2.2 | 短信&邮件模板设置 | manual | 1.5d | 2016-08-24 A | 2016-08-25 A | 100% |  |  |  | 澄泓 | 12h | 12h |
| 42 | 1.2.2.2.3 | 异常订单管理模块 | manual | 3d | 2016-08-25 A | 2016-08-30 A | 100% |  |  |  | 无涯 | 24h | 24h |
| 43 | 1.2.2.2.4 | 配置管理模块编码 | manual | 2d | 2016-08-26 A | 2016-08-30 A | 100% |  |  |  | 澄泓 | 16h | 16h |
| 44 | 1.2.2.2.5 | 对账单管理模块编码 | manual | 3d | 2016-09-01 A | 2016-09-05 A | 100% |  |  |  | 无涯 | 24h | 24h |
| 45 | 1.2.2.2.6 | 增加转账功能相关的开发 | manual | 8d | 2016-09-08 A | 2016-09-19 A | 100% |  |  |  | 无涯 | 64h | 64h |
| 46 | 1.3 | **三大系统整合工作** |  | 34d | 2016-08-08 A | 2016-09-22 | 94% | 2.12d |  |  |  | 256h | 240h |
| 47 | 1.3.1 | 数据库设计及调整 | manual | 0.5d | 2016-08-08 A | 2016-08-08 A | 100% |  |  |  | 春泽 | 4h | 4h |
| 48 | 1.3.2 | 加密方式设计及调整 | manual | 0.5d | 2016-08-09 A | 2016-08-09 A | 100% |  |  |  | 春泽 | 4h | 4h |
| 49 | 1.3.3 | 商户数据设计及调整 | manual | 0.5d | 2016-08-10 A | 2016-08-10 A | 100% |  |  |  | 春泽 | 4h | 4h |
| 50 | 1.3.4 | 渠道分离设计及调整 | manual | 0.5d | 2016-08-11 A | 2016-08-11 A | 100% |  |  |  | 春泽 | 4h | 4h |
| 51 | 1.3.5 | **各渠道业务流程调整** |  | 34d | 2016-08-08 A | 2016-09-22 | 93% | 2.27d |  |  |  | 240h | 224h |
| 52 | 1.3.5.1 | **支付宝渠道业务调整** |  | 24d | 2016-08-08 A | 2016-09-08 A | 100% |  |  |  |  | 80h | 80h |
| 53 | 1.3.5.1.1 | **支付业务逻辑修改** |  | 24d | 2016-08-08 A | 2016-09-08 A | 100% |  |  |  |  | 56h | 56h |
| 54 | 1.3.5.1.1.1 | PC端 | manual | 1d | 2016-08-08 A | 2016-08-08 A | 100% |  |  |  | 春泽 | 8h | 8h |
| 55 | 1.3.5.1.1.2 | WAP端 | manual | 2d | 2016-08-09 A | 2016-08-10 A | 100% |  |  |  | 春泽 | 16h | 16h |
| 56 | 1.3.5.1.1.3 | IOS端 | manual | 2d | 2016-09-05 A | 2016-09-06 A | 100% |  |  |  | 卓尔 | 16h | 16h |
| 57 | 1.3.5.1.1.4 | Android端 | manual | 2d | 2016-09-07 A | 2016-09-08 A | 100% |  |  |  | 卓尔 | 16h | 16h |
| 58 | 1.3.5.1.2 | 转账业务逻辑 | manual | 2d | 2016-09-01 A | 2016-09-05 A | 100% |  |  |  | 腾渊 | 16h | 16h |
| 59 | 1.3.5.1.3 | 退款业务逻辑修改 | manual | 1d | 2016-08-24 A | 2016-08-25 A | 100% |  |  |  | 卓尔 | 8h | 8h |

| ID | WBS | Task | Type | Duration | Start | Finish | Complete | Remaining | Actual start | Resources | Work | Actual work |
| --- | --- | --- | --- | --- | --- | --- | --- | --- | --- | --- | --- | --- |
| 60 | 1.3.5.2 | **微信渠道业务调整** |  | 28d | 2016-08-08 A | 2016-09-14 A | 100% |  |  |  | 80h | 80h |
| 61 | 1.3.5.2.1 | **支付业务逻辑修改** |  | 28d | 2016-08-08 A | 2016-09-14 A | 100% |  |  |  | 56h | 56h |
| 62 | 1.3.5.2.1.1 | PC端 | manual | 1d | 2016-08-08 A | 2016-08-08 A | 100% |  |  | 春泽 | 8h | 8h |
| 63 | 1.3.5.2.1.2 | WAP端 | manual | 2d | 2016-08-09 A | 2016-08-10 A | 100% |  |  | 春泽 | 16h | 16h |
| 64 | 1.3.5.2.1.3 | IOS端 | manual | 2d | 2016-09-09 A | 2016-09-12 A | 100% |  |  | 卓尔 | 16h | 16h |
| 65 | 1.3.5.2.1.4 | Android端 | manual | 2d | 2016-09-13 A | 2016-09-14 A | 100% |  |  | 卓尔 | 16h | 16h |
| 66 | 1.3.5.2.2 | 转账业务逻辑 | manual | 2d | 2016-09-05 A | 2016-09-07 A | 100% |  |  | 腾渊 | 16h | 16h |
| 67 | 1.3.5.2.3 | 退款业务逻辑修改 | manual | 1d | 2016-08-26 A | 2016-08-26 A | 100% |  |  | 卓尔 | 8h | 8h |
| 68 | 1.3.5.3 | **银联渠道业务调整** |  | 14d | 2016-09-05 | 2016-09-22 | 80% | 2.8d | 2016-08-29 |  | 80h | 64h |
| 69 | 1.3.5.3.1 | **支付业务逻辑修改** |  | 14d | 2016-09-05 A | 2016-09-22 A | 100% |  |  |  | 56h | 56h |
| 70 | 1.3.5.3.1.1 | PC端 | manual | 1d | 2016-09-05 A | 2016-09-05 A | 100% |  |  | 春泽 | 8h | 8h |
| 71 | 1.3.5.3.1.2 | WAP端 | manual | 2d | 2016-09-06 A | 2016-09-07 A | 100% |  |  | 春泽 | 16h | 16h |
| 72 | 1.3.5.3.1.3 | IOS端 | manual | 2d | 2016-09-15 A | 2016-09-19 A | 100% |  |  | 卓尔 | 16h | 16h |
| 73 | 1.3.5.3.1.4 | Android端 | manual | 2d | 2016-09-20 A | 2016-09-22 A | 100% |  |  | 卓尔 | 16h | 16h |
| 74 | 1.3.5.3.2 | 转账业务逻辑 | manual | 2d | 2016-09-07 | 2016-09-09 |  |  |  | 腾渊 | 16h |  |
| 75 | 1.3.5.3.3 | 退款业务逻辑修改 | manual | 1d | 2016-08-29 A | 2016-08-29 A | 100% |  |  | 卓尔 | 8h | 8h |
| 76 | 1.3.5.4 | **工行渠道业务调整** | inactive | 10d | 2016-08-08 | 2016-08-22 |  |  |  |  | 80h |  |
| 77 | 1.3.5.4.1 | **支付业务逻辑修改** | inactive | 1d? | 2016-08-08 | 2016-08-09 |  |  |  |  | 56h |  |
| 78 | 1.3.5.4.1.1 | PC端 | inactive, manual | 1d | 2016-09-12 | 2016-09-13 |  |  |  | 腾渊 | 8h |  |
| 79 | 1.3.5.4.1.2 | WAP端 | inactive, manual | 2d | 2016-09-14 | 2016-09-16 |  |  |  | 腾渊 | 16h |  |
| 80 | 1.3.5.4.1.3 | IOS端 | inactive, manual | 2d | 2016-09-19 | 2016-09-21 |  |  |  | 腾渊 | 16h |  |
| 81 | 1.3.5.4.1.4 | Android端 | inactive, manual | 2d | 2016-09-22 | 2016-09-26 |  |  |  | 腾渊 | 16h |  |
| 82 | 1.3.5.4.2 | 转账业务逻辑修改 | inactive, manual | 2d | 2016-09-27 | 2016-09-29 |  |  |  | 腾渊 | 16h |  |
| 83 | 1.3.5.4.3 | 退款业务逻辑修改 | inactive, manual | 1d | 2016-09-30 | 2016-09-30 |  |  |  | 腾渊 | 8h |  |

Notes:
- 72: 银联开通SDK对接权限。

| ID | WBS | Task | Type | Duration | Start | Finish | Predecessors | Complete | Remaining | Total slack | Constraint | Resources | Work | Actual work |
| --- | --- | --- | --- | --- | --- | --- | --- | --- | --- | --- | --- | --- | --- | --- |
| 84 | 1.3.5.5 | **中金支付渠道业务调整** | inactive | 10d | 2016-08-08 | 2016-08-22 |  |  |  |  |  |  | 80h |  |
| 85 | 1.3.5.5.1 | **支付业务逻辑修改** | inactive | 1d? | 2016-08-08 | 2016-08-09 |  |  |  |  |  |  | 56h |  |
| 86 | 1.3.5.5.1.1 | PC端 | inactive, manual | 1d | 2016-09-12 | 2016-09-13 |  |  |  |  |  | 秉谦 | 8h |  |
| 87 | 1.3.5.5.1.2 | WAP端 | inactive, manual | 2d | 2016-09-14 | 2016-09-16 |  |  |  |  |  | 秉谦 | 16h |  |
| 88 | 1.3.5.5.1.3 | IOS端 | inactive, manual | 2d | 2016-09-19 | 2016-09-21 |  |  |  |  |  | 秉谦 | 16h |  |
| 89 | 1.3.5.5.1.4 | Android端 | inactive, manual | 2d | 2016-09-22 | 2016-09-26 |  |  |  |  |  | 秉谦 | 16h |  |
| 90 | 1.3.5.5.2 | 转账业务逻辑修改 | inactive, manual | 2d | 2016-09-27 | 2016-09-29 |  |  |  |  |  | 秉谦 | 16h |  |
| 91 | 1.3.5.5.3 | 退款业务逻辑修改 | inactive, manual | 1d | 2016-09-30 | 2016-09-30 |  |  |  |  |  | 秉谦 | 8h |  |
| 92 | 2 | 系统全流程联调 | manual | 6d | 2016-09-15 A | 2016-09-22 A |  | 100% |  |  |  |  |  |  |
| 93 | 3 | **翌支付测试工作安排** |  | 40d | 2016-08-25 A | 2016-10-19 |  | 87% | 5.35d |  |  |  | 157h | 136h |
| 94 | 3.1 | 测试用例编写 | manual | 1d | 2016-08-25 | 2016-08-25 |  |  |  |  |  | 如善 | 8h |  |
| 95 | 3.2 | 测试用例评审 | manual | 0.5d | 2016-08-26 | 2016-08-26 |  |  |  |  |  | 如善 | 4h |  |
| 96 | 3.3 | **测试执行** |  | 18d | 2016-09-23 A | 2016-10-18 A |  | 100% |  |  |  |  | 136h | 136h |
| 97 | 3.3.1 | **第一轮测试：本期新功能测试执行，企业门户与运营平台主流程回归** |  | 6d | 2016-09-23 A | 2016-09-30 A |  | 100% |  |  |  |  | 64h | 64h |
| 98 | 3.3.1.1 | 运营管理平台：企业资料修改审核、异常订单处理、参数配置、邮件模板列表、短信模板列表 | manual | 3d | 2016-09-23 A | 2016-09-27 A |  | 100% |  |  | start no earlier than 2016-09-23 | 李莉莉 | 24h | 24h |
| 99 | 3.3.1.2 | 企业门户：订单管理、异常订单、我的资料 | manual | 3d | 2016-09-23 A | 2016-09-27 A |  | 100% |  |  | start no earlier than 2016-09-23 | 李莉莉 | 24h | 24h |
| 100 | 3.3.1.3 | 企业门户与运营平台主流程回归 | manual | 2d | 2016-09-28 A | 2016-09-30 A |  | 100% |  |  | finish no earlier than 2016-09-29 | 李莉莉 | 16h | 16h |
| 101 | 3.3.2 | **第二轮测试：第一轮缺陷回归及系统功能集成测试（兼容性测试）** |  | 3d | 2016-10-08 A | 2016-10-11 A |  | 100% |  |  |  |  | 32h | 32h |
| 102 | 3.3.2.1 | 第一轮产生缺陷回归 | manual | 2d | 2016-10-08 A | 2016-10-09 A |  | 100% |  |  | start no earlier than 2016-10-08 | 李莉莉 | 16h | 16h |
| 103 | 3.3.2.2 | 企业门户、运营平台全功能回归（包括新旧功能） | manual | 2d | 2016-10-10 A | 2016-10-11 A | 102 | 100% |  |  | start no earlier than 2016-10-10 | 李莉莉 | 16h | 16h |
| 104 | 3.3.3 | **第三轮测试：全量回归，全测试用例及缺陷回归** |  | 5d | 2016-10-12 A | 2016-10-18 A |  | 100% |  |  |  |  | 40h | 40h |
| 105 | 3.3.3.1 | 前两轮产生缺陷回归 | manual | 2d | 2016-10-12 A | 2016-10-13 A | 103 | 100% |  |  |  | 李莉莉 | 16h | 16h |
| 106 | 3.3.3.2 | 全流程回归 | manual | 3d | 2016-10-14 A | 2016-10-18 A | 105 | 100% |  |  |  | 李莉莉 | 24h | 24h |
| 107 | 3.4 | 测试阶段报告编写 |  | 0.25d | 2016-10-19 | 2016-10-19 | 106 |  |  | 6.62d | start no earlier than 2016-10-19 | 如善 | 2h |  |
| 108 | 3.5 | 用户手册编写及评审 |  | 0.88d | 2016-10-19 | 2016-10-19 | 106 |  |  | 6d | finish no earlier than 2016-10-19 | 李莉莉 | 7h |  |

| ID | WBS | Task | Type | Duration | Start | Finish | Complete | Actual finish | Resources | Work | Actual work |
| --- | --- | --- | --- | --- | --- | --- | --- | --- | --- | --- | --- |
| 109 | 4 | **翌支付部署工作安排** |  | 41d | 2016-09-01 A | 2016-10-27 | 100% | 2016-10-21 |  | 160h | 160h |
| 110 | 4.1 | **测试环境部署** |  | 12d | 2016-09-01 A | 2016-09-16 A | 100% |  |  | 88h | 88h |
| 111 | 4.1.1 | 测试服务器申请 | manual | 2d | 2016-09-01 A | 2016-09-02 A | 100% |  | 嘉善 | 16h | 16h |
| 112 | 4.1.2 | 基础软件安装 | manual | 1d | 2016-09-05 A | 2016-09-05 A | 100% |  | 嘉善 | 8h | 8h |
| 113 | 4.1.3 | 测试环境配置 | manual | 1d | 2016-09-06 A | 2016-09-06 A | 100% |  | 嘉善 | 8h | 8h |
| 114 | 4.1.4 | 测试环境联调(渠道分离) | manual | 7d | 2016-09-07 A | 2016-09-16 A | 100% |  | 嘉善 | 56h | 56h |
| 115 | 4.2 | **正式环境部署** |  | 37d | 2016-09-01 A | 2016-10-21 A | 100% |  |  | 72h | 72h |
| 116 | 4.2.1 | 生产服务器申请 | manual | 2d | 2016-09-01 A | 2016-09-02 A | 100% |  | 嘉善 | 16h | 16h |
| 117 | 4.2.2 | 基础软件安装 | manual | 1d | 2016-09-05 A | 2016-09-05 A | 100% |  | 嘉善 | 8h | 8h |
| 118 | 4.2.3 | 生产环境配置（渠道分离） | manual | 1d | 2016-09-20 A | 2016-09-20 A | 100% |  | 嘉善 | 8h | 8h |
| 119 | 4.2.4 | 生产环境联调 | manual | 3d | 2016-10-18 A | 2016-10-20 A | 100% |  | 嘉善 | 24h | 24h |
| 120 | 4.2.5 | 正式上线 | manual | 1d | 2016-10-21 A | 2016-10-21 A | 100% |  | 嘉善; 道隐 | 16h | 16h |
| 121 | 5 | **项目转维工作安排** |  | 4d | 2016-10-24 | 2016-10-27 |  |  |  | 64h |  |
| 122 | 5.1 | 转维资料准备 | manual | 3d | 2016-10-24 | 2016-10-26 |  |  | 道隐; 嘉善 | 48h |  |
| 123 | 5.2 | 安排转维培训 | manual | 1d | 2016-10-27 | 2016-10-27 |  |  | 道隐; 嘉善 | 16h |  |
